Schedule from MS Project, 2013-09-30 to 2014-04-20, 3 hours a day.

## Calendars

- Standard: Mon-Fri 12:00-15:00; Sat-Sun 15:00-18:00. Exceptions (off unless hours are given): 2013-12-01 to 2014-01-20 (Final Exams and Christmas Vacation).

## Resources

| Resource |
| --- |
| Μαρία Χριστοδούλου |
| Χρίστα Φιλίππου |
| Αντωνία Νικολάου |
| Αντρέας Αντρέου |
| Φωτεινή Νικολαΐδου |
| Αγγελική Νεοφύτου |

## Schedule

| ID | WBS | Task | Type | Duration | Start | Finish | Predecessors | Total slack | Free slack | Constraint | Resources | Work |
| --- | --- | --- | --- | --- | --- | --- | --- | --- | --- | --- | --- | --- |
| 1 | 1 | **1. Requirement Analysis** |  | 12d | 2013-09-30 | 2013-10-11 |  | 3d | 0d |  |  | 282h |
| 2 | 1.1 | 1.1 Meeting with Client |  | 1d | 2013-09-30 | 2013-09-30 |  | 3d | 0d |  | Αγγελική Νεοφύτου; Αντρέας Αντρέου; Αντωνία Νικολάου; Μαρία Χριστοδούλου; Φωτεινή Νικολαΐδου; Χρίστα Φιλίππου | 18h |
| 3 | 1.2 | 1.2 Functional Requirements |  | 11d | 2013-10-01 | 2013-10-11 | 2 | 3d |  |  | Μαρία Χριστοδούλου; Χρίστα Φιλίππου | 66h |
| 4 | 1.3 | 1.3 Non-Functional Requirements |  | 11d | 2013-10-01 | 2013-10-11 | 2 | 3d |  |  | Αγγελική Νεοφύτου; Αντρέας Αντρέου; Αντωνία Νικολάου; Μαρία Χριστοδούλου; Φωτεινή Νικολαΐδου; Χρίστα Φιλίππου | 198h |
| 5 | 2 | Requirements Document | milestone | 0d | 2013-10-11 | 2013-10-11 | 1 | 50d |  |  |  |  |
| 6 | 3 | **2. Requirements Speecification** |  | 14d | 2013-10-12 | 2013-10-25 | 1 | 3d | 0d |  |  | 318h |
| 7 | 3.1 | 2.1 Data Store |  | 5d | 2013-10-12 | 2013-10-16 |  | 3d | 0d |  | Αντρέας Αντρέου; Αντωνία Νικολάου; Μαρία Χριστοδούλου; Φωτεινή Νικολαΐδου; Χρίστα Φιλίππου | 75h |
| 8 | 3.2 | 2.2 Use Cases |  | 9d | 2013-10-17 | 2013-10-25 | 7 | 3d |  |  | Αντρέας Αντρέου; Χρίστα Φιλίππου; Αντωνία Νικολάου; Φωτεινή Νικολαΐδου | 108h |
| 9 | 3.3 | 2.3 Domain Model Class Diagram |  | 8d | 2013-10-17 | 2013-10-24 | 7 | 3d | 0d |  | Μαρία Χριστοδούλου; Χρίστα Φιλίππου | 48h |
| 10 | 3.4 | 2.4 ER |  | 1d | 2013-10-25 | 2013-10-25 | 7, 9 | 3d |  |  | Αντωνία Νικολάου; Μαρία Χριστοδούλου | 6h |
| 11 | 3.5 | 2.5 Activity Plan |  | 9d | 2013-10-12 | 2013-10-20 |  | 8d |  |  | Μαρία Χριστοδούλου; Χρίστα Φιλίππου; Αντωνία Νικολάου | 81h |
| 12 | 4 | Requirements Specification Document | milestone | 0d | 2013-10-25 | 2013-10-25 | 6 | 36d |  |  |  |  |
| 13 | 5 | **3. Prototyping** |  | 6d | 2013-10-26 | 2013-10-31 | 6 | 3d | 0d |  |  | 93h |
| 14 | 5.1 | 3.1. General Information Screen |  | 4d | 2013-10-26 | 2013-10-29 |  | 3d | 0d | start no earlier than 2013-10-26 | Χρίστα Φιλίππου; Μαρία Χριστοδούλου | 24h |
| 15 | 5.2 | 3.2. Personal Information Screen |  | 4d | 2013-10-26 | 2013-10-29 |  | 3d | 0d | start no earlier than 2013-10-25 | Αντρέας Αντρέου; Φωτεινή Νικολαΐδου | 24h |
| 16 | 5.3 | 3.3 Settings Screen |  | 4d | 2013-10-26 | 2013-10-29 |  | 3d | 0d | start no earlier than 2013-10-25 | Αντωνία Νικολάου | 12h |
| 17 | 5.4 | 3.4 Home Screen |  | 4d | 2013-10-26 | 2013-10-29 |  | 3d | 0d | start no earlier than 2013-10-25 | Αγγελική Νεοφύτου | 12h |
| 18 | 5.5 | 3.5 Integration |  | 1d | 2013-10-30 | 2013-10-30 | 14, 15, 16, 17 | 3d | 0d |  | Αγγελική Νεοφύτου; Χρίστα Φιλίππου; Αντρέας Αντρέου; Αντωνία Νικολάου | 12h |
| 19 | 5.6 | 3.6 Testing & Corrections |  | 1d | 2013-10-31 | 2013-10-31 | 18 | 3d |  |  | Μαρία Χριστοδούλου; Φωτεινή Νικολαΐδου; Χρίστα Φιλίππου | 9h |
| 20 | 6 | Prototype Version 1 | milestone | 0d | 2013-10-31 | 2013-10-31 | 13 | 30d |  |  |  |  |
| 21 | 7 | **4. System Design Document** |  | 12d | 2013-11-04 | 2013-11-15 | 13 | 0d |  |  |  | 228h |
| 22 | 7.1 | 4.1 Meeting with Client |  | 1d | 2013-11-04 | 2013-11-04 |  | 0d |  | start no earlier than 2013-11-04 | Αγγελική Νεοφύτου; Αντρέας Αντρέου; Αντωνία Νικολάου; Μαρία Χριστοδούλου; Φωτεινή Νικολαΐδου; Χρίστα Φιλίππου | 18h |
| 23 | 7.2 | 4.2 Architecture |  | 9d | 2013-11-05 | 2013-11-13 | 22, 7, 10 | 2d |  |  | Αγγελική Νεοφύτου; Αντρέας Αντρέου; Αντωνία Νικολάου; Μαρία Χριστοδούλου | 108h |
| 24 | 7.3 | 4.3 Analytical Class Diagrams |  | 9d | 2013-11-05 | 2013-11-13 | 9, 22 | 0d |  |  | Μαρία Χριστοδούλου; Χρίστα Φιλίππου | 54h |
| 25 | 7.4 | 4.4 Sample Scenarios and Diagrams |  | 2d | 2013-11-05 | 2013-11-06 | 8, 22 | 9d |  |  | Αντρέας Αντρέου; Αγγελική Νεοφύτου; Φωτεινή Νικολαΐδου; Χρίστα Φιλίππου; Αντωνία Νικολάου | 30h |
| 26 | 7.5 | 4.4 XMI file |  | 2d | 2013-11-14 | 2013-11-15 | 24 | 0d |  |  | Μαρία Χριστοδούλου; Αγγελική Νεοφύτου; Χρίστα Φιλίππου | 18h |
| 27 | 8 | System Design Document | milestone | 0d | 2013-11-15 | 2013-11-15 | 21 | 15d |  |  |  |  |

| ID | WBS | Task | Type | Duration | Start | Finish | Predecessors | Total slack | Free slack | Resources | Work |
| --- | --- | --- | --- | --- | --- | --- | --- | --- | --- | --- | --- |
| 28 | 9 | **5. Prototyping (final Version)** |  | 10d | 2013-11-16 | 2013-11-25 | 21 | 0d |  |  | 204h |
| 29 | 9.1 | 5.1 General Information Screen |  | 6d | 2013-11-16 | 2013-11-21 |  | 0d |  | Μαρία Χριστοδούλου; Χρίστα Φιλίππου | 36h |
| 30 | 9.2 | 5.2 Personal Information Screen |  | 6d | 2013-11-16 | 2013-11-21 |  | 0d |  | Αντρέας Αντρέου; Φωτεινή Νικολαΐδου | 36h |
| 31 | 9.3 | 5.3 Settings Screen |  | 6d | 2013-11-16 | 2013-11-21 |  | 0d |  | Αντωνία Νικολάου | 18h |
| 32 | 9.4 | 5.4 Home Screen |  | 6d | 2013-11-16 | 2013-11-21 |  | 0d |  | Αγγελική Νεοφύτου | 18h |
| 33 | 9.5 | 5.5 Functionality |  | 6d | 2013-11-16 | 2013-11-21 |  | 0d |  | Αγγελική Νεοφύτου; Αντρέας Αντρέου; Φωτεινή Νικολαΐδου | 54h |
| 34 | 9.6 | 5.6 Integration |  | 2d | 2013-11-22 | 2013-11-23 | 29, 30, 31, 32, 33 | 0d |  | Αγγελική Νεοφύτου; Αντρέας Αντρέου; Αντωνία Νικολάου; Χρίστα Φιλίππου | 24h |
| 35 | 9.7 | 5.7 Testing & Corrections |  | 2d | 2013-11-24 | 2013-11-25 | 34 | 0d |  | Αντωνία Νικολάου; Μαρία Χριστοδούλου; Χρίστα Φιλίππου | 18h |
| 36 | 10 | Prototype Version 2 | milestone | 0d | 2013-11-25 | 2013-11-25 | 28 | 5d |  |  |  |
| 37 | 11 | 6. Self and peer assessment |  | 5d | 2013-11-26 | 2013-11-30 | 28 | 0d |  | Αγγελική Νεοφύτου; Αντρέας Αντρέου; Αντωνία Νικολάου; Μαρία Χριστοδούλου; Φωτεινή Νικολαΐδου; Χρίστα Φιλίππου | 90h |
| 38 | 12 | **7. Deliverable Documents Revision** |  | 11d | 2014-01-21 | 2014-01-31 | 37 | 0d |  |  | 123h |
| 39 | 12.1 | 7.1 Requirements Document Revision |  | 4d | 2014-01-21 | 2014-01-24 |  | 7d | 0d | Αγγελική Νεοφύτου; Αντωνία Νικολάου | 24h |
| 40 | 12.2 | Revised Requirements Document | milestone | 0d | 2014-01-24 | 2014-01-24 | 39 | 7d |  |  |  |
| 41 | 12.3 | 7.2 Requirements Specification Document |  | 11d | 2014-01-21 | 2014-01-31 |  | 0d |  | Αντωνία Νικολάου; Μαρία Χριστοδούλου | 66h |
| 42 | 12.4 | Revised Specification Document | milestone | 0d | 2014-01-31 | 2014-01-31 | 41 | 0d |  |  |  |
| 43 | 12.5 | 7.3 Design Document Revision |  | 11d | 2014-01-21 | 2014-01-31 |  | 0d |  | Μαρία Χριστοδούλου | 33h |
| 44 | 12.6 | Revised Design Document | milestone | 0d | 2014-01-31 | 2014-01-31 | 43 | 0d |  |  |  |
| 45 | 13 | **8. First Iteration** |  | 39d | 2014-02-01 | 2014-03-11 | 38 | 0d |  |  | 492h |
| 46 | 13.1 | **8.1 Database Structure** |  | 4d | 2014-02-01 | 2014-02-04 |  | 0d |  |  | 15h |
| 47 | 13.1.1 | 8.1.1 Table Creation |  | 2d | 2014-02-01 | 2014-02-02 |  | 0d |  | Αντωνία Νικολάου | 6h |
| 48 | 13.1.2 | 8.1.2 Insert/Update/Delete Functions |  | 1d | 2014-02-03 | 2014-02-03 | 47 | 0d |  | Αντωνία Νικολάου | 3h |
| 49 | 13.1.3 | 8.1.3 Constraints/Triggers |  | 1d | 2014-02-03 | 2014-02-03 | 47 | 0d |  | Αντωνία Νικολάου | 3h |
| 50 | 13.1.4 | 8.1.4 Testing |  | 1d | 2014-02-04 | 2014-02-04 | 47, 48, 49 | 0d |  | Αντωνία Νικολάου | 3h |
| 51 | 13.2 | **8.2 General Information Screen** |  | 15d | 2014-02-05 | 2014-02-19 | 46 | 18d |  |  | 90h |
| 52 | 13.2.1 | 8.2.1 Implementation |  | 7d | 2014-02-05 | 2014-02-11 |  | 17d | 0d | Αγγελική Νεοφύτου; Αντωνία Νικολάου | 42h |
| 53 | 13.2.2 | 8.2.2 Feature Testing |  | 2d | 2014-02-12 | 2014-02-13 | 52 | 17d | 0d | Αγγελική Νεοφύτου; Αντωνία Νικολάου | 12h |
| 54 | 13.2.3 | 8.2.3 Incorporation |  | 4d | 2014-02-14 | 2014-02-17 | 53 | 17d | 0d | Αγγελική Νεοφύτου; Αντωνία Νικολάου | 24h |
| 55 | 13.2.4 | 8.2.4 Application Testing |  | 2d | 2014-02-18 | 2014-02-19 | 54 | 17d |  | Αγγελική Νεοφύτου; Αντωνία Νικολάου | 12h |

| ID | WBS | Task | Duration | Start | Finish | Predecessors | Total slack | Free slack | Constraint | Resources | Work |
| --- | --- | --- | --- | --- | --- | --- | --- | --- | --- | --- | --- |
| 56 | 13.3 | **8.3 Personal Information Screen** | 19d | 2014-02-05 | 2014-02-23 | 46 | 0d |  |  |  | 171h |
| 57 | 13.3.1 | 8.3.1 Implementation | 10d | 2014-02-05 | 2014-02-14 |  | 0d |  |  | Αντωνία Νικολάου; Αγγελική Νεοφύτου; Μαρία Χριστοδούλου | 90h |
| 58 | 13.3.2 | 8.3.2 Feature Testing | 3d | 2014-02-15 | 2014-02-17 | 57 | 0d |  |  | Αντωνία Νικολάου; Αγγελική Νεοφύτου; Μαρία Χριστοδούλου | 27h |
| 59 | 13.3.3 | 8.3.3 Incorporation | 4d | 2014-02-18 | 2014-02-21 | 58 | 0d |  |  | Αντωνία Νικολάου; Αγγελική Νεοφύτου; Μαρία Χριστοδούλου | 36h |
| 60 | 13.3.4 | 8.3.4 Application Testing | 2d | 2014-02-22 | 2014-02-23 | 59, 71 | 0d |  |  | Αντωνία Νικολάου; Αγγελική Νεοφύτου; Μαρία Χριστοδούλου | 18h |
| 61 | 13.4 | **8.4 Home Screen** | 7d | 2014-02-01 | 2014-02-07 |  | 30d |  |  |  | 21h |
| 62 | 13.4.1 | 8.4.1 Implementation | 3d | 2014-02-01 | 2014-02-03 |  | 29d | 0d |  | Αγγελική Νεοφύτου | 9h |
| 63 | 13.4.2 | 8.4.2 Feature Testing | 1d | 2014-02-04 | 2014-02-04 | 62 | 29d | 0d |  | Αγγελική Νεοφύτου | 3h |
| 64 | 13.4.3 | 8.4.3 Incorporation | 2d | 2014-02-05 | 2014-02-06 | 63 | 29d | 0d |  | Αγγελική Νεοφύτου | 6h |
| 65 | 13.4.4 | 8.4.4 Application Testing | 1d | 2014-02-07 | 2014-02-07 | 64 | 29d |  |  | Αγγελική Νεοφύτου | 3h |
| 66 | 13.5 | **8.5 Settings Screen** | 12d | 2014-02-05 | 2014-02-16 | 46 | 21d |  |  |  | 36h |
| 67 | 13.5.1 | 8.5.1 Implementation | 5d | 2014-02-05 | 2014-02-09 |  | 20d | 0d |  | Αντωνία Νικολάου | 15h |
| 68 | 13.5.2 | 8.5.2 Feature Testing | 2d | 2014-02-10 | 2014-02-11 | 67 | 20d | 0d |  | Αντωνία Νικολάου | 6h |
| 69 | 13.5.3 | 8.5.3 Incorporation | 3d | 2014-02-12 | 2014-02-14 | 68 | 20d | 0d |  | Αντωνία Νικολάου | 9h |
| 70 | 13.5.4 | 8.5.4 Application Testing | 2d | 2014-02-15 | 2014-02-16 | 69 | 20d |  |  | Αντωνία Νικολάου | 6h |
| 71 | 13.6 | **8.6 Database Data** | 7d | 2014-02-15 | 2014-02-21 |  | 0d |  | start no earlier than 2014-02-15 |  | 51h |
| 72 | 13.6.1 | 8.6.1 Check/Modify Data | 1d | 2014-02-15 | 2014-02-15 |  | 0d |  |  | Αγγελική Νεοφύτου; Αντωνία Νικολάου; Μαρία Χριστοδούλου | 9h |
| 73 | 13.6.2 | 8.6.2 Insert Data | 1d | 2014-02-16 | 2014-02-16 | 72, 46 | 0d |  |  | Αγγελική Νεοφύτου; Αντωνία Νικολάου; Μαρία Χριστοδούλου | 9h |
| 74 | 13.6.3 | 8.6.3 Database Testing | 1d | 2014-02-17 | 2014-02-17 | 73 | 0d |  |  | Αγγελική Νεοφύτου; Αντωνία Νικολάου; Μαρία Χριστοδούλου | 9h |
| 75 | 13.6.4 | 8.6.4 Data Incorporation in Application | 2d | 2014-02-18 | 2014-02-19 | 74 | 0d |  |  | Αγγελική Νεοφύτου; Αντωνία Νικολάου | 12h |
| 76 | 13.6.5 | 8.6.5 Application Data Testing | 2d | 2014-02-20 | 2014-02-21 | 75 | 0d |  |  | Αγγελική Νεοφύτου; Αντωνία Νικολάου | 12h |
| 77 | 13.7 | **8.7 Push Notifications** | 14d | 2014-02-24 | 2014-03-09 | 56 | 0d |  |  |  | 42h |
| 78 | 13.7.1 | 8.7.1 Implementation | 8d | 2014-02-24 | 2014-03-03 |  | 0d |  |  | Μαρία Χριστοδούλου | 24h |
| 79 | 13.7.2 | 8.7.2 Incorporation | 4d | 2014-03-04 | 2014-03-07 | 78 | 0d |  |  | Μαρία Χριστοδούλου | 12h |
| 80 | 13.7.3 | 8.7.3 Feature/Application Testing | 2d | 2014-03-08 | 2014-03-09 | 79 | 0d |  |  | Μαρία Χριστοδούλου | 6h |

| ID | WBS | Task | Type | Duration | Start | Finish | Predecessors | Total slack | Free slack | Resources | Work |
| --- | --- | --- | --- | --- | --- | --- | --- | --- | --- | --- | --- |
| 81 | 13.8 | **8.8 Web Application** |  | 16d | 2014-02-05 | 2014-02-20 | 46 | 17d |  |  | 48h |
| 82 | 13.8.1 | 8.8.1 Design/Structure |  | 4d | 2014-02-05 | 2014-02-08 |  | 17d | 0d | Μαρία Χριστοδούλου | 12h |
| 83 | 13.8.2 | 8.8.2 First Implementation |  | 4d | 2014-02-09 | 2014-02-12 | 82 | 17d | 0d | Μαρία Χριστοδούλου | 12h |
| 84 | 13.8.3 | 8.8.3 Database Connection |  | 3d | 2014-02-13 | 2014-02-15 | 83 | 17d | 0d | Μαρία Χριστοδούλου | 9h |
| 85 | 13.8.4 | 8.8.4 Second Implementation |  | 3d | 2014-02-16 | 2014-02-18 | 84 | 17d | 0d | Μαρία Χριστοδούλου | 9h |
| 86 | 13.8.5 | 8.8.5 Web App Testing |  | 2d | 2014-02-19 | 2014-02-20 | 85 | 17d |  | Μαρία Χριστοδούλου | 6h |
| 87 | 13.9 | 8.9 Overall Testing |  | 2d | 2014-03-10 | 2014-03-11 | 46, 51, 56, 61, 66, 71, 77, 81 | 0d |  | Αγγελική Νεοφύτου; Αντωνία Νικολάου; Μαρία Χριστοδούλου | 18h |
| 88 | 14 | Application First Version | milestone | 0d | 2014-03-11 | 2014-03-11 | 87 | 0d |  |  |  |
| 89 | 15 | **9. Second Iteration** |  | 31d | 2014-03-12 | 2014-04-11 | 88 | 0d |  |  | 408h |
| 90 | 15.1 | 9.1 Meeting with Client |  | 1d | 2014-03-12 | 2014-03-12 |  | 30d |  |  |  |
| 91 | 15.2 | **9.2 Database** |  | 5d | 2014-03-12 | 2014-03-16 |  | 0d |  |  | 30h |
| 92 | 15.2.1 | 9.2.1 Structure Refinement |  | 2d | 2014-03-12 | 2014-03-13 |  | 0d |  | Αντωνία Νικολάου | 6h |
| 93 | 15.2.2 | 9.2.2 Modify/Insert Additional Data |  | 2d | 2014-03-14 | 2014-03-15 | 92 | 0d |  | Αγγελική Νεοφύτου; Αντωνία Νικολάου; Μαρία Χριστοδούλου | 18h |
| 94 | 15.2.3 | 9.2.3 Functions/Constraints Refinement |  | 1d | 2014-03-14 | 2014-03-14 | 92 | 1d |  | Αντωνία Νικολάου | 3h |
| 95 | 15.2.4 | 9.2.4 Testing |  | 1d | 2014-03-16 | 2014-03-16 | 92, 93, 94 | 0d |  | Αντωνία Νικολάου | 3h |
| 96 | 15.3 | **9.3 General Information** |  | 15d | 2014-03-17 | 2014-03-31 | 91 | 9d |  |  | 90h |
| 97 | 15.3.1 | 9.3.1 Refinement |  | 7d | 2014-03-17 | 2014-03-23 |  | 9d | 0d | Αγγελική Νεοφύτου; Αντωνία Νικολάου | 42h |
| 98 | 15.3.2 | 9.3.2 Feature Testing |  | 2d | 2014-03-24 | 2014-03-25 | 97 | 9d | 0d | Αγγελική Νεοφύτου; Αντωνία Νικολάου | 12h |
| 99 | 15.3.3 | 9.3.3 Incorporation |  | 4d | 2014-03-26 | 2014-03-29 | 98 | 9d | 0d | Αγγελική Νεοφύτου; Αντωνία Νικολάου | 24h |
| 100 | 15.3.4 | 9.3.4 Application Testing |  | 2d | 2014-03-30 | 2014-03-31 | 99 | 9d |  | Αγγελική Νεοφύτου; Αντωνία Νικολάου | 12h |
| 101 | 15.4 | **9.4 Personal Information** |  | 17d | 2014-03-17 | 2014-04-02 | 91 | 0d |  |  | 153h |
| 102 | 15.4.1 | 9.4.1 Refinement |  | 9d | 2014-03-17 | 2014-03-25 |  | 0d |  | Αγγελική Νεοφύτου; Αντωνία Νικολάου; Μαρία Χριστοδούλου | 81h |
| 103 | 15.4.2 | 9.4.2 Feature Testing |  | 3d | 2014-03-26 | 2014-03-28 | 102 | 0d |  | Αγγελική Νεοφύτου; Αντωνία Νικολάου; Μαρία Χριστοδούλου | 27h |
| 104 | 15.4.3 | 9.4.3 Incorporation |  | 3d | 2014-03-29 | 2014-03-31 | 103 | 0d |  | Αγγελική Νεοφύτου; Αντωνία Νικολάου; Μαρία Χριστοδούλου | 27h |
| 105 | 15.4.4 | 9.4.4 Application Testing |  | 2d | 2014-04-01 | 2014-04-02 | 104 | 0d |  | Αγγελική Νεοφύτου; Αντωνία Νικολάου; Μαρία Χριστοδούλου | 18h |

| ID | WBS | Task | Type | Duration | Start | Finish | Predecessors | Total slack | Free slack | Constraint | Resources | Work |
| --- | --- | --- | --- | --- | --- | --- | --- | --- | --- | --- | --- | --- |
| 106 | 15.5 | **9.5 Home Screen** |  | 7d | 2014-03-12 | 2014-03-18 |  | 22d |  |  |  | 21h |
| 107 | 15.5.1 | 9.5.1 Refinement |  | 3d | 2014-03-12 | 2014-03-14 |  | 22d | 0d |  | Αγγελική Νεοφύτου | 9h |
| 108 | 15.5.2 | 9.5.2 Feature Testing |  | 1d | 2014-03-15 | 2014-03-15 | 107 | 22d | 0d |  | Αγγελική Νεοφύτου | 3h |
| 109 | 15.5.3 | 9.5.3 Incorporation |  | 2d | 2014-03-16 | 2014-03-17 | 108 | 22d | 0d |  | Αγγελική Νεοφύτου | 6h |
| 110 | 15.5.4 | 9.5.4 Application Testing |  | 1d | 2014-03-18 | 2014-03-18 | 109 | 22d |  |  | Αγγελική Νεοφύτου | 3h |
| 111 | 15.6 | **9.6 Settings Screen** |  | 12d | 2014-03-17 | 2014-03-28 | 91 | 12d |  |  |  | 36h |
| 112 | 15.6.1 | 9.6.1 Refinement |  | 5d | 2014-03-17 | 2014-03-21 |  | 12d | 0d |  | Αντωνία Νικολάου | 15h |
| 113 | 15.6.2 | 9.6.2 Feature Testing |  | 2d | 2014-03-22 | 2014-03-23 | 112 | 12d | 0d |  | Αντωνία Νικολάου | 6h |
| 114 | 15.6.3 | 9.6.3 Incorporation |  | 3d | 2014-03-24 | 2014-03-26 | 113 | 12d | 0d |  | Αντωνία Νικολάου | 9h |
| 115 | 15.6.4 | 9.6.4 Application Testing |  | 2d | 2014-03-27 | 2014-03-28 | 114 | 12d |  |  | Αντωνία Νικολάου | 6h |
| 116 | 15.7 | **9.7 Push Notifications** |  | 13d | 2014-03-17 | 2014-03-29 | 91 | 11d |  |  |  | 39h |
| 117 | 15.7.1 | 9.3.1 Refinement |  | 7d | 2014-03-17 | 2014-03-23 |  | 11d | 0d |  | Μαρία Χριστοδούλου | 21h |
| 118 | 15.7.2 | 9.3.2 Incorporation |  | 3d | 2014-03-24 | 2014-03-26 | 117 | 11d | 0d |  | Μαρία Χριστοδούλου | 9h |
| 119 | 15.7.3 | 9.3.3 Feature/Application Testing |  | 3d | 2014-03-27 | 2014-03-29 | 118 | 11d |  |  | Μαρία Χριστοδούλου | 9h |
| 120 | 15.8 | **9.8 Web Application** |  | 7d | 2014-04-03 | 2014-04-09 | 101 | 0d |  |  |  | 21h |
| 121 | 15.8.1 | 9.3.1 Refinement |  | 5d | 2014-04-03 | 2014-04-07 |  | 0d |  |  | Μαρία Χριστοδούλου | 15h |
| 122 | 15.8.2 | 9.3.2 Web App Testing |  | 2d | 2014-04-08 | 2014-04-09 | 121 | 0d |  |  | Μαρία Χριστοδούλου | 6h |
| 123 | 15.9 | 9.9 Overall Testing |  | 2d | 2014-04-10 | 2014-04-11 | 91, 96, 101, 106, 111, 116, 120 | 0d |  |  | Αγγελική Νεοφύτου; Αντωνία Νικολάου; Μαρία Χριστοδούλου | 18h |
| 124 | 16 | Application Second Version | milestone | 0d | 2014-04-11 | 2014-04-11 | 89 | 9d |  |  |  |  |
| 125 | 17 | 9. Software Metrics |  | 9d | 2014-04-12 | 2014-04-20 | 89 | 0d |  |  | Αγγελική Νεοφύτου; Αντωνία Νικολάου; Μαρία Χριστοδούλου | 81h |
| 126 | 18 | 10. Delivery to Client |  | 1d | 2014-04-19 | 2014-04-19 | 89 | 1d |  | start no earlier than 2014-04-19 | Αγγελική Νεοφύτου; Αντωνία Νικολάου; Μαρία Χριστοδούλου | 9h |
